# ANARI CTS 1.0

Schedule from MS Project, 2022-09-12 to 2022-10-05.

## Calendars

- Standard: Mon-Fri 08:00-12:00, 13:00-17:00; Sat-Sun off.

## Resources

| Resource |
| --- |
| Management |
| Project Manager |
| Analyst |
| Developer |
| Testers |
| Trainers |
| Technical Communicators |
| Deployment Team |

## Schedule

| ID | WBS | Task | Duration | Start | Finish | Predecessors | Total slack | Free slack |
| --- | --- | --- | --- | --- | --- | --- | --- | --- |
| 1 | 1 | **Project Setup** | 10d? | 2022-09-12 | 2022-09-23 |  |  |  |
| 2 | 1.1 | **Setup architecture** | 2d? | 2022-09-12 | 2022-09-13 |  | 8d |  |
| 3 | 1.1.1 | Setup ANARI SDK | 1d? | 2022-09-12 | 2022-09-12 |  | 8d | 0d |
| 4 | 1.1.2 | Setup C++ Wrapper | 1d? | 2022-09-12 | 2022-09-12 |  | 8d | 0d |
| 5 | 1.1.3 | Setup Python | 1d? | 2022-09-12 | 2022-09-12 |  | 8d | 0d |
| 6 | 1.1.4 | Setup pybind11 | 1d? | 2022-09-13 | 2022-09-13 | 4, 5, 3 | 8d |  |
| 7 | 2 | **Implementation Phase** | 4d | 2022-09-26 | 2022-09-29 | 1 | 0d |  |
| 8 | 2.1 | **Render a set of known test scenes** | 2d | 2022-09-26 | 2022-09-27 |  | 0d |  |
| 9 | 2.1.1 | Define test scene format | 1d | 2022-09-26 | 2022-09-26 |  | 1d |  |
| 10 | 2.1.2 | **Render test scenes** | 2d | 2022-09-26 | 2022-09-27 |  | 0d |  |
| 11 | 2.1.2.1 | Write Python API | 1d | 2022-09-26 | 2022-09-26 |  | 0d |  |
| 12 | 2.1.2.2 | Write C++ backend | 1d | 2022-09-26 | 2022-09-26 |  | 0d |  |
| 13 | 2.1.2.3 | Connect via pybind11 | 1d | 2022-09-27 | 2022-09-27 | 11, 12 | 0d |  |
| 14 | 2.2 | **Image comparison “smoke tests”** | 2d | 2022-09-28 | 2022-09-29 | 8 | 0d |  |
| 15 | 2.2.1 | Compare ground truth with test renderings | 1d | 2022-09-28 | 2022-09-28 |  | 0d |  |
| 16 | 2.2.2 | Compile PDF report | 1d | 2022-09-29 | 2022-09-29 | 15 | 0d |  |
| 17 | 2.3 | **Verification of object/parameter info metadata** | 2d | 2022-09-26 | 2022-09-27 |  | 2d |  |
| 18 | 2.3.1 | Write Python API | 1d | 2022-09-26 | 2022-09-26 |  | 2d | 0d |
| 19 | 2.3.2 | Write C++ backend | 1d | 2022-09-26 | 2022-09-26 |  | 2d | 0d |
| 20 | 2.3.3 | Connect via pybind11 | 1d | 2022-09-27 | 2022-09-27 | 18, 19 | 2d |  |
| 21 | 2.4 | **Verification of known object properties** | 2d | 2022-09-26 | 2022-09-27 |  | 2d |  |
| 22 | 2.4.1 | Write Python API | 1d | 2022-09-26 | 2022-09-26 |  | 2d | 0d |
| 23 | 2.4.2 | Write C++ backend | 1d | 2022-09-26 | 2022-09-26 |  | 2d | 0d |
| 24 | 2.4.3 | Connect via pybind11 | 1d | 2022-09-27 | 2022-09-27 | 22, 23 | 2d |  |

| ID | WBS | Task | Type | Duration | Start | Finish | Predecessors | Total slack | Free slack |
| --- | --- | --- | --- | --- | --- | --- | --- | --- | --- |
| 25 | 2.5 | **List core extensions implemented by a device** |  | 2d | 2022-09-26 | 2022-09-27 |  | 2d |  |
| 26 | 2.5.1 | Write Python API |  | 1d | 2022-09-26 | 2022-09-26 |  | 2d | 0d |
| 27 | 2.5.2 | Write C++ backend |  | 1d | 2022-09-26 | 2022-09-26 |  | 2d | 0d |
| 28 | 2.5.3 | Connect via pybind11 |  | 1d | 2022-09-27 | 2022-09-27 | 26, 27 | 2d |  |
| 29 | 2.6 | **Aggregate test results** |  | 2d | 2022-09-26 | 2022-09-27 |  | 2d |  |
| 30 | 2.6.1 | Call all Python API functions |  | 1d | 2022-09-26 | 2022-09-26 |  | 2d | 0d |
| 31 | 2.6.2 | Compile PDF with all results |  | 1d | 2022-09-27 | 2022-09-27 | 30 | 2d |  |
| 32 | 3 | **Beta** |  | 1d | 2022-09-30 | 2022-09-30 | 7 | 0d |  |
| 33 | 3.1 | Bug fixing |  | 1d | 2022-09-30 | 2022-09-30 |  | 0d |  |
| 34 | 3.2 | Write tests |  | 1d | 2022-09-30 | 2022-09-30 |  | 0d |  |
| 35 | 4 | **Release Candidate** |  | 1d | 2022-10-03 | 2022-10-03 | 32 | 0d |  |
| 36 | 4.1 | Bug fixing |  | 1d | 2022-10-03 | 2022-10-03 |  | 0d |  |
| 37 | 4.2 | Write examples |  | 1d | 2022-10-03 | 2022-10-03 |  | 0d |  |
| 38 | 5 | **Release** |  | 1d | 2022-10-04 | 2022-10-04 | 35 | 0d |  |
| 39 | 5.1 | Documentation |  | 1d | 2022-10-04 | 2022-10-04 |  | 0d |  |
| 40 | 5.2 | Final testing and bugfixing |  | 1d | 2022-10-04 | 2022-10-04 |  | 0d |  |
| 41 | 6 | Maintanance |  | 1d? | 2022-10-05 | 2022-10-05 | 38 | 0d |  |
| 42 | 7 | ANARI CTS 1.0 complete | milestone | 0d | 2022-10-05 | 2022-10-05 | 41 | 0d |  |
